# Разработка модуля

Schedule from MS Project, 2023-12-21 to 2024-04-29.

## Calendars

- Standard: Mon-Fri 08:00-12:00, 13:00-17:00; Sat-Sun off.

## Resources

| Resource |
| --- |
| Management |
| Project Manager |
| Analyst |
| Developer |
| Testers |
| Trainers |
| Technical Communicators |
| Deployment Team |

## Schedule

| ID | WBS | Task | Type | Duration | Start | Finish | Predecessors | Total slack | Resources | Work |
| --- | --- | --- | --- | --- | --- | --- | --- | --- | --- | --- |
| 1 | 1 | **Анализ требований** |  | 14d | 2023-12-21 | 2024-01-09 |  | 0d |  | 120h |
| 2 | 1.1 | Провезти анализ требовваний |  | 5d | 2023-12-21 | 2023-12-27 |  | 0d | Analyst | 40h |
| 3 | 1.2 | Draft preliminary software specifications |  | 3d | 2023-12-28 | 2024-01-01 | 2 | 0d | Analyst | 24h |
| 4 | 1.3 | Develop preliminary budget |  | 2d | 2024-01-02 | 2024-01-03 | 3 | 0d | Project Manager | 16h |
| 5 | 1.4 | Review software specifications/budget with team |  | 4h | 2024-01-04 | 2024-01-04 | 4 | 0d | Project Manager; Analyst | 8h |
| 6 | 1.5 | Incorporate feedback on software specifications |  | 1d | 2024-01-04 | 2024-01-05 | 5 | 0d | Analyst | 8h |
| 7 | 1.6 | Develop delivery timeline |  | 1d | 2024-01-05 | 2024-01-08 | 6 | 0d | Project Manager | 8h |
| 8 | 1.7 | Obtain approvals to proceed (concept, timeline, budget) |  | 4h | 2024-01-08 | 2024-01-08 | 7 | 0d | Management; Project Manager | 8h |
| 9 | 1.8 | Secure required resources |  | 1d | 2024-01-09 | 2024-01-09 | 8 | 0d | Project Manager | 8h |
| 10 | 1.9 | Analysis complete | milestone | 0d | 2024-01-09 | 2024-01-09 | 9 | 0d |  |  |
| 11 | 2 | **Design** |  | 14.5d | 2024-01-10 | 2024-01-30 |  | 0d |  | 120h |
| 12 | 2.1 | Review preliminary software specifications |  | 2d | 2024-01-10 | 2024-01-11 | 10 | 0d | Analyst | 16h |
| 13 | 2.2 | Develop functional specifications |  | 5d | 2024-01-12 | 2024-01-18 | 12 | 0d | Analyst | 40h |
| 14 | 2.3 | Develop prototype based on functional specifications |  | 4d | 2024-01-19 | 2024-01-24 | 13 | 0d | Analyst | 32h |
| 15 | 2.4 | Review functional specifications |  | 2d | 2024-01-25 | 2024-01-26 | 14 | 0d | Management | 16h |
| 16 | 2.5 | Incorporate feedback into functional specifications |  | 1d | 2024-01-29 | 2024-01-29 | 15 | 0d | Management | 8h |
| 17 | 2.6 | Obtain approval to proceed |  | 4h | 2024-01-30 | 2024-01-30 | 16 | 0d | Management; Project Manager | 8h |
| 18 | 2.7 | Design complete | milestone | 0d | 2024-01-30 | 2024-01-30 | 17 | 0d |  |  |
| 19 | 3 | **Development** |  | 21.75d | 2024-01-30 | 2024-02-29 |  | 0d |  | 264h |
| 20 | 3.1 | Review functional specifications |  | 1d | 2024-01-30 | 2024-01-31 | 18 | 0d | Developer | 8h |
| 21 | 3.2 | Identify modular/tiered design parameters |  | 1d | 2024-01-31 | 2024-02-01 | 20 | 0d | Developer | 8h |
| 22 | 3.3 | Assign development staff |  | 1d | 2024-02-01 | 2024-02-02 | 21 | 0d | Developer | 8h |
| 23 | 3.4 | Develop code |  | 15d | 2024-02-02 | 2024-02-23 | 22 | 0d | Developer | 120h |
| 24 | 3.5 | Developer testing (primary debugging) |  | 15d | 2024-02-08 | 2024-02-29 | 23FS-7.5% | 0d | Developer | 120h |
| 25 | 3.6 | Development complete | milestone | 0d | 2024-02-29 | 2024-02-29 | 24 | 0d |  |  |

| ID | WBS | Task | Type | Duration | Start | Finish | Predecessors | Total slack | Free slack | Resources | Work |
| --- | --- | --- | --- | --- | --- | --- | --- | --- | --- | --- | --- |
| 26 | 4 | **Testing** |  | 48.75d | 2024-01-30 | 2024-04-08 |  | 15d |  |  | 280h |
| 27 | 4.1 | Develop unit test plans using product specifications |  | 4d | 2024-01-30 | 2024-02-05 | 18 | 17.75d |  | Testers | 32h |
| 28 | 4.2 | Develop integration test plans using product specifications |  | 4d | 2024-01-30 | 2024-02-05 | 18 | 59.75d |  | Testers | 32h |
| 29 | 4.3 | **Unit Testing** |  | 15d | 2024-02-29 | 2024-03-21 |  | 0d |  |  | 120h |
| 30 | 4.3.1 | Review modular code |  | 5d | 2024-02-29 | 2024-03-07 | 27, 25 | 0d |  | Testers | 40h |
| 31 | 4.3.2 | Test component modules to product specifications |  | 2d | 2024-03-07 | 2024-03-11 | 25, 30 | 0d |  | Testers | 16h |
| 32 | 4.3.3 | Identify anomalies to product specifications |  | 3d | 2024-03-11 | 2024-03-14 | 31 | 0d |  | Testers | 24h |
| 33 | 4.3.4 | Modify code |  | 3d | 2024-03-14 | 2024-03-19 | 32 | 0d |  | Testers | 24h |
| 34 | 4.3.5 | Re-test modified code |  | 2d | 2024-03-19 | 2024-03-21 | 33 | 0d |  | Testers | 16h |
| 35 | 4.3.6 | Unit testing complete | milestone | 0d | 2024-03-21 | 2024-03-21 | 34 | 0d |  |  |  |
| 36 | 4.4 | **Integration Testing** |  | 12d | 2024-03-21 | 2024-04-08 |  | 0d |  |  | 96h |
| 37 | 4.4.1 | Test module integration |  | 5d | 2024-03-21 | 2024-03-28 | 35 | 0d |  | Testers | 40h |
| 38 | 4.4.2 | Identify anomalies to specifications |  | 2d | 2024-03-28 | 2024-04-01 | 37 | 0d |  | Testers | 16h |
| 39 | 4.4.3 | Modify code |  | 3d | 2024-04-01 | 2024-04-04 | 38 | 0d |  | Testers | 24h |
| 40 | 4.4.4 | Re-test modified code |  | 2d | 2024-04-04 | 2024-04-08 | 39 | 0d |  | Testers | 16h |
| 41 | 4.4.5 | Integration testing complete | milestone | 0d | 2024-04-08 | 2024-04-08 | 40 | 0d |  |  |  |
| 42 | 5 | **Training** |  | 45.75d | 2024-01-30 | 2024-04-03 |  | 3d |  |  | 256h |
| 43 | 5.1 | Develop training specifications for end users |  | 3d | 2024-01-30 | 2024-02-02 | 18 | 21.75d | 18.75d | Trainers | 24h |
| 44 | 5.2 | Develop training specifications for helpdesk support staff |  | 3d | 2024-01-30 | 2024-02-02 | 18 | 21.75d | 18.75d | Trainers | 24h |
| 45 | 5.3 | Identify training delivery methodology (computer based training, classroom, etc.) |  | 2d | 2024-01-30 | 2024-02-01 | 18 | 22.75d | 19.75d | Trainers | 16h |
| 46 | 5.4 | Develop training materials |  | 3w | 2024-02-29 | 2024-03-21 | 43, 25, 44, 45 | 3d | 0d | Trainers | 120h |
| 47 | 5.5 | Conduct training usability study |  | 4d | 2024-03-21 | 2024-03-27 | 46 | 3d | 0d | Trainers | 32h |
| 48 | 5.6 | Finalize training materials |  | 3d | 2024-03-27 | 2024-04-01 | 47 | 3d | 0d | Trainers | 24h |
| 49 | 5.7 | Develop training delivery mechanism |  | 2d | 2024-04-01 | 2024-04-03 | 48 | 3d | 0d | Trainers | 16h |
| 50 | 5.8 | Training materials complete | milestone | 0d | 2024-04-03 | 2024-04-03 | 49 | 3d |  |  |  |

| ID | WBS | Task | Type | Duration | Start | Finish | Predecessors | Total slack | Free slack | Resources | Work |
| --- | --- | --- | --- | --- | --- | --- | --- | --- | --- | --- | --- |
| 51 | 6 | **Documentation** |  | 30.5d | 2024-01-30 | 2024-03-12 |  | 18.25d |  |  | 336h |
| 52 | 6.1 | Develop Help specification |  | 1d | 2024-01-30 | 2024-01-31 | 18 | 27.75d | 9.5d | Technical Communicators | 8h |
| 53 | 6.2 | Develop Help system |  | 3w | 2024-02-14 | 2024-03-05 | 52, 23FS-5% | 18.25d | 0d | Technical Communicators | 120h |
| 54 | 6.3 | Review Help documentation |  | 3d | 2024-03-06 | 2024-03-08 | 53 | 18.25d | 0d | Technical Communicators | 24h |
| 55 | 6.4 | Incorporate Help documentation feedback |  | 2d | 2024-03-11 | 2024-03-12 | 54 | 18.25d | 0d | Technical Communicators | 16h |
| 56 | 6.5 | Develop user manuals specifications |  | 2d | 2024-01-30 | 2024-02-01 | 18 | 27.75d | 8.5d | Technical Communicators | 16h |
| 57 | 6.6 | Develop user manuals |  | 3w | 2024-02-14 | 2024-03-05 | 56, 23FS-5% | 19.25d | 0d | Technical Communicators | 120h |
| 58 | 6.7 | Review all user documentation |  | 2d | 2024-03-06 | 2024-03-07 | 57 | 19.25d | 0d | Technical Communicators | 16h |
| 59 | 6.8 | Incorporate user documentation feedback |  | 2d | 2024-03-08 | 2024-03-11 | 58 | 19.25d | 1d | Technical Communicators | 16h |
| 60 | 6.9 | Documentation complete | milestone | 0d | 2024-03-12 | 2024-03-12 | 59, 55 | 18.25d |  |  |  |
| 61 | 7 | **Pilot** |  | 70.25d | 2024-01-10 | 2024-04-17 |  | 0d |  |  | 64h |
| 62 | 7.1 | Identify test group |  | 1d | 2024-01-10 | 2024-01-10 | 10 | 61.25d | 0d | Project Manager | 8h |
| 63 | 7.2 | Develop software delivery mechanism |  | 1d | 2024-01-11 | 2024-01-11 | 62 | 61.25d |  |  |  |
| 64 | 7.3 | Install/deploy software |  | 1d | 2024-04-08 | 2024-04-09 | 41, 63, 60, 50 | 0d |  | Deployment Team | 8h |
| 65 | 7.4 | Obtain user feedback |  | 1w | 2024-04-09 | 2024-04-16 | 64 | 0d |  | Deployment Team | 40h |
| 66 | 7.5 | Evaluate testing information |  | 1d | 2024-04-16 | 2024-04-17 | 65 | 0d |  | Deployment Team | 8h |
| 67 | 7.6 | Pilot complete | milestone | 0d | 2024-04-17 | 2024-04-17 | 66 | 0d |  |  |  |
| 68 | 8 | **Deployment** |  | 5d | 2024-04-17 | 2024-04-24 |  | 0d |  |  | 40h |
| 69 | 8.1 | Determine final deployment strategy |  | 1d | 2024-04-17 | 2024-04-18 | 67 | 0d |  | Deployment Team | 8h |
| 70 | 8.2 | Develop deployment methodology |  | 1d | 2024-04-18 | 2024-04-19 | 69 | 0d |  | Deployment Team | 8h |
| 71 | 8.3 | Secure deployment resources |  | 1d | 2024-04-19 | 2024-04-22 | 70 | 0d |  | Deployment Team | 8h |
| 72 | 8.4 | Train support staff |  | 1d | 2024-04-22 | 2024-04-23 | 71 | 0d |  | Deployment Team | 8h |
| 73 | 8.5 | Deploy software |  | 1d | 2024-04-23 | 2024-04-24 | 72 | 0d |  | Deployment Team | 8h |
| 74 | 8.6 | Deployment complete | milestone | 0d | 2024-04-24 | 2024-04-24 | 73 | 0d |  |  |  |

| ID | WBS | Task | Type | Duration | Start | Finish | Predecessors | Total slack | Resources | Work |
| --- | --- | --- | --- | --- | --- | --- | --- | --- | --- | --- |
| 75 | 9 | **Post Implementation Review** |  | 3d | 2024-04-24 | 2024-04-29 |  | 0d |  | 24h |
| 76 | 9.1 | Document lessons learned |  | 1d | 2024-04-24 | 2024-04-25 | 74 | 0d | Project Manager | 8h |
| 77 | 9.2 | Distribute to team members |  | 1d | 2024-04-25 | 2024-04-26 | 76 | 0d | Project Manager | 8h |
| 78 | 9.3 | Create software maintenance team |  | 1d | 2024-04-26 | 2024-04-29 | 77 | 0d | Project Manager | 8h |
| 79 | 9.4 | Post implementation review complete | milestone | 0d | 2024-04-29 | 2024-04-29 | 78 | 0d |  |  |
| 80 | 10 | Software development template complete | milestone | 0d | 2024-04-29 | 2024-04-29 | 79 | 0d |  |  |
